# Diagrama de Gantt

How a schedule from MS Project changed from version to version. A marks actual dates.

## Version 1 (saved 2019-11-19)

| ID | WBS | Task | Duration | Start | Finish | Complete | Total float | Constraint |
| --- | --- | --- | --- | --- | --- | --- | --- | --- |
| 1 | 1 | **PROYECTO API** | 535d | 2019-02-09 | 2021-02-25 | 55% |  |  |
| 2 | 1.1 | **Análisis** | 210d | 2019-02-23 | 2019-12-13 A | 100% |  |  |
| 3 | 1.1.1 | **Recolección de Información** | 22d | 2019-02-23 | 2019-03-24 A | 100% |  |  |
| 4 |  | Encuesta | 12.75d | 2019-02-25 A | 2019-03-24 A | 100% |  |  |
| 5 |  | Ficha técnica del proyecto | 6.25d | 2019-03-15 A | 2019-03-23 A | 100% |  | finish no earlier than 2019-03-16 |
| 6 |  | Requisitos Funcionales - Requisitos No Funcionales | 6d | 2019-03-23 A | 2019-03-29 A | 100% |  |  |
| 7 |  | Historias de Usuario | 6d | 2019-03-30 A | 2019-04-05 A | 100% |  |  |
| 8 |  | IEEE830 | 11d | 2019-04-07 A | 2019-04-27 A | 100% |  |  |
| 9 |  | BPMN | 14.75d | 2019-04-28 A | 2019-05-18 A | 100% |  | start no earlier than 2019-04-28 |
| 10 |  | Hardware | 21d | 2019-11-09 A | 2019-12-13 A | 100% |  |  |
| 11 |  | Software | 21d | 2019-11-09 A | 2019-12-13 A | 100% |  |  |
| 12 |  | Ensayos Normas de Seguridad | 6d | 2019-10-26 A | 2019-11-01 A | 100% |  |  |
| 13 | 1.2 | **Diseño** | 80d | 2019-05-18 A | 2019-09-07 A | 100% |  |  |
| 14 |  | Modelo Entidad-Relación (MER) | 6d | 2019-05-18 A | 2019-06-01 A | 100% |  |  |
| 15 |  | Diagrama de Clases | 6d | 2019-06-02 A | 2019-06-22 A | 100% |  |  |
| 16 |  | Diagrama de Casos de Uso | 3.75d | 2019-06-22 A | 2019-06-29 A | 100% |  |  |
| 17 |  | Casos de Uso Extendido | 6d | 2019-06-30 A | 2019-07-14 A | 100% |  |  |
| 18 |  | Diccionario de Datos | 7d | 2019-07-20 A | 2019-07-28 A | 100% |  |  |
| 19 |  | Diagrama de Distribución | 3.75d | 2019-07-28 A | 2019-08-03 A | 100% |  |  |
| 20 |  | Sketches | 4.75d | 2019-08-24 A | 2019-09-07 A | 100% |  |  |
| 21 | 1.3 | **Desarrollo** | 55d | 2019-08-25 A | 2019-11-10 | 59% | 0d |  |
| 22 |  | Mockups | 12d | 2019-08-25 A | 2019-09-08 A | 100% |  |  |
| 23 |  | Diseño de páginas web | 6d | 2019-08-25 A | 2019-09-08 A | 100% |  |  |
| 24 |  | Base de Datos Normalización Proyecto API | 7d | 2019-09-22 A | 2019-09-30 A | 100% |  |  |
| 25 |  | Seguridad Bases de Datos | 12d | 2019-10-26 | 2019-11-09 |  |  |  |
| 26 |  | Versionamiento | 2d | 2019-11-09 A | 2019-11-10 | 50% |  |  |
| 27 |  | CMD | 6d | 2019-11-02 | 2019-11-08 |  |  |  |
| 28 | 1.4 | **Implementación** | 65d | 2019-11-02 A | 2020-02-01 | 46% | 0d |  |
| 29 |  | Implementación pagina web | 27d | 2019-11-02 A | 2019-12-07 | 80% |  |  |
| 30 |  | Implementación base de datos | 27d | 2019-11-02 A | 2019-12-07 | 10% |  |  |
| 31 |  | Implementación base de datos a página web | 27d | 2019-11-02 A | 2019-12-08 | 10% |  |  |
| 32 |  | Pruebas | 42d | 2019-12-07 A | 2020-02-01 | 50% |  |  |
| 33 |  | Funcionamiento página web | 42d | 2019-12-07 A | 2020-02-01 | 90% |  |  |
| 34 |  | Funcionamiento del software | 42d | 2019-12-07 A | 2020-02-01 | 20% |  |  |
| 35 | 1.5 | **Mantenimiento** | 154d | 2020-06-22 A | 2021-01-21 | 40% | 0d |  |
| 36 |  | Ajustes del Proyecto | 154d | 2020-06-22 A | 2021-01-21 | 80% |  |  |
| 37 |  | Actualización del sistema | 154d | 2020-06-22 | 2021-01-21 |  |  |  |

## Version 2 (saved 2019-12-10)

Last finish stays 2021-02-25.

Changed:

| ID | Task | Finish | Duration | Complete | Other |
| --- | --- | --- | --- | --- | --- |
| 1 | **PROYECTO API** |  |  | 55% → 58% |  |
| 4 | Encuesta |  |  |  | resources Encuesta [500%]; Brian Moya; Luis Quiroga → Encuesta (Impresora Marca: HP, Modelo: W2G50A) [500%]; Brian Moya (Scrum Master y Scrum Development); Luis Quiroga (Scrum Master y Scrum Development) |
| 5 | Ficha técnica del proyecto |  |  |  | resources Computador [200%]; Brian Moya; Luis Quiroga → Computador (Procesador: Intel Core i3, Memoria RAM: 4GB, Sistema Operativo: Windows) [200%]; Brian Moya (Scrum Master y Scrum Development); Luis Quiroga (Scrum Master y Scrum Development) |
| 6 | Requisitos Funcionales - Requisitos No Funcionales |  |  |  | resources Computador [200%]; Brian Moya; Luis Quiroga → Computador (Procesador: Intel Core i3, Memoria RAM: 4GB, Sistema Operativo: Windows) [200%]; Brian Moya (Scrum Master y Scrum Development); Luis Quiroga (Scrum Master y Scrum Development) |
| 7 | Historias de Usuario |  |  |  | resources Computador [200%]; Brian Moya; Luis Quiroga → Computador (Procesador: Intel Core i3, Memoria RAM: 4GB, Sistema Operativo: Windows) [200%]; Brian Moya (Scrum Master y Scrum Development); Luis Quiroga (Scrum Master y Scrum Development) |
| 8 | IEEE830 |  |  |  | resources Computador [200%]; Brian Moya; Luis Quiroga → Computador (Procesador: Intel Core i3, Memoria RAM: 4GB, Sistema Operativo: Windows) [200%]; Brian Moya (Scrum Master y Scrum Development); Luis Quiroga (Scrum Master y Scrum Development) |
| 9 | BPMN |  |  |  | resources Computador [200%]; Brian Moya; Luis Quiroga → Computador (Procesador: Intel Core i3, Memoria RAM: 4GB, Sistema Operativo: Windows) [200%]; Brian Moya (Scrum Master y Scrum Development); Luis Quiroga (Scrum Master y Scrum Development) |
| 10 | Hardware |  |  |  | resources Computador [200%]; Luis Quiroga; Brian Moya → Computador (Procesador: Intel Core i3, Memoria RAM: 4GB, Sistema Operativo: Windows) [200%]; Luis Quiroga (Scrum Master y Scrum Development); Brian Moya (Scrum Master y Scrum Development) |
| 11 | Software |  |  |  | resources Computador [200%]; Luis Quiroga; Brian Moya → Computador (Procesador: Intel Core i3, Memoria RAM: 4GB, Sistema Operativo: Windows) [200%]; Luis Quiroga (Scrum Master y Scrum Development); Brian Moya (Scrum Master y Scrum Development) |
| 12 | Ensayos Normas de Seguridad |  |  |  | resources Computador [200%]; Luis Quiroga; Brian Moya → Computador (Procesador: Intel Core i3, Memoria RAM: 4GB, Sistema Operativo: Windows) [200%]; Luis Quiroga (Scrum Master y Scrum Development); Brian Moya (Scrum Master y Scrum Development) |
| 14 | Modelo Entidad-Relación (MER) |  |  |  | resources Computador [200%]; Brian Moya; Luis Quiroga → Computador (Procesador: Intel Core i3, Memoria RAM: 4GB, Sistema Operativo: Windows) [200%]; Brian Moya (Scrum Master y Scrum Development); Luis Quiroga (Scrum Master y Scrum Development) |
| 15 | Diagrama de Clases |  |  |  | resources Computador [200%]; Brian Moya; Luis Quiroga → Computador (Procesador: Intel Core i3, Memoria RAM: 4GB, Sistema Operativo: Windows) [200%]; Brian Moya (Scrum Master y Scrum Development); Luis Quiroga (Scrum Master y Scrum Development) |
| 16 | Diagrama de Casos de Uso |  |  |  | resources Computador [200%]; Brian Moya; Luis Quiroga → Computador (Procesador: Intel Core i3, Memoria RAM: 4GB, Sistema Operativo: Windows) [200%]; Brian Moya (Scrum Master y Scrum Development); Luis Quiroga (Scrum Master y Scrum Development) |
| 17 | Casos de Uso Extendido |  |  |  | resources Computador [200%]; Brian Moya; Luis Quiroga → Computador (Procesador: Intel Core i3, Memoria RAM: 4GB, Sistema Operativo: Windows) [200%]; Brian Moya (Scrum Master y Scrum Development); Luis Quiroga (Scrum Master y Scrum Development) |
| 18 | Diccionario de Datos |  |  |  | resources Computador [200%]; Brian Moya; Luis Quiroga → Computador (Procesador: Intel Core i3, Memoria RAM: 4GB, Sistema Operativo: Windows) [200%]; Brian Moya (Scrum Master y Scrum Development); Luis Quiroga (Scrum Master y Scrum Development) |
| 19 | Diagrama de Distribución |  |  |  | resources Computador [200%]; Brian Moya; Luis Quiroga → Computador (Procesador: Intel Core i3, Memoria RAM: 4GB, Sistema Operativo: Windows) [200%]; Brian Moya (Scrum Master y Scrum Development); Luis Quiroga (Scrum Master y Scrum Development) |
| 20 | Sketches |  |  |  | resources Computador [200%]; Brian Moya; Luis Quiroga → Computador (Procesador: Intel Core i3, Memoria RAM: 4GB, Sistema Operativo: Windows) [200%]; Brian Moya (Scrum Master y Scrum Development); Luis Quiroga (Scrum Master y Scrum Development) |
| 21 | **Desarrollo** | 2019-11-10 → 2019-12-25 (+45d) | 55d → 87.25d | 59% → 53% |  |
| 22 | Mockups |  |  |  | resources Computador [200%]; Brian Moya; Luis Quiroga → Computador (Procesador: Intel Core i3, Memoria RAM: 4GB, Sistema Operativo: Windows) [200%]; Brian Moya (Scrum Master y Scrum Development); Luis Quiroga (Scrum Master y Scrum Development) |
| 23 | Diseño de páginas web |  |  |  | resources Computador [200%]; Brian Moya; Luis Quiroga → Computador (Procesador: Intel Core i3, Memoria RAM: 4GB, Sistema Operativo: Windows) [200%]; Brian Moya (Scrum Master y Scrum Development); Luis Quiroga (Scrum Master y Scrum Development) |
| 24 | Base de Datos Normalización Proyecto API |  |  |  | resources Computador [200%]; Brian Moya; Luis Quiroga → Computador (Procesador: Intel Core i3, Memoria RAM: 4GB, Sistema Operativo: Windows) [200%]; Brian Moya (Scrum Master y Scrum Development); Luis Quiroga (Scrum Master y Scrum Development) |
| 25 | Seguridad Bases de Datos |  |  |  | resources Computador [200%]; Brian Moya; Luis Quiroga → Computador (Procesador: Intel Core i3, Memoria RAM: 4GB, Sistema Operativo: Windows) [200%]; Brian Moya (Scrum Master y Scrum Development); Luis Quiroga (Scrum Master y Scrum Development) |
| 26 | Versionamiento |  |  |  | resources Computador [200%]; Brian Moya; Luis Quiroga → Computador (Procesador: Intel Core i3, Memoria RAM: 4GB, Sistema Operativo: Windows) [200%]; Brian Moya (Scrum Master y Scrum Development); Luis Quiroga (Scrum Master y Scrum Development) |
| 27 | CMD |  |  |  | resources Computador [200%]; Brian Moya; Luis Quiroga → Computador (Procesador: Intel Core i3, Memoria RAM: 4GB, Sistema Operativo: Windows) [200%]; Brian Moya (Scrum Master y Scrum Development); Luis Quiroga (Scrum Master y Scrum Development) |
| 29 | Implementación pagina web |  |  |  | resources Computador [200%]; Brian Moya; Luis Quiroga → Computador (Procesador: Intel Core i3, Memoria RAM: 4GB, Sistema Operativo: Windows) [200%]; Brian Moya (Scrum Master y Scrum Development); Luis Quiroga (Scrum Master y Scrum Development) |
| 30 | Implementación base de datos |  |  |  | resources Computador [200%]; Brian Moya; Luis Quiroga → Computador (Procesador: Intel Core i3, Memoria RAM: 4GB, Sistema Operativo: Windows) [200%]; Brian Moya (Scrum Master y Scrum Development); Luis Quiroga (Scrum Master y Scrum Development) |
| 31 | Implementación base de datos a página web |  |  |  | resources Computador [200%]; Brian Moya; Luis Quiroga → Computador (Procesador: Intel Core i3, Memoria RAM: 4GB, Sistema Operativo: Windows) [200%]; Brian Moya (Scrum Master y Scrum Development); Luis Quiroga (Scrum Master y Scrum Development) |
| 32 | Pruebas |  |  |  | resources Computador [200%]; Brian Moya; Luis Quiroga → Computador (Procesador: Intel Core i3, Memoria RAM: 4GB, Sistema Operativo: Windows) [200%]; Brian Moya (Scrum Master y Scrum Development); Luis Quiroga (Scrum Master y Scrum Development) |
| 33 | Funcionamiento página web |  |  |  | resources Computador [200%]; Brian Moya; Luis Quiroga → Computador (Procesador: Intel Core i3, Memoria RAM: 4GB, Sistema Operativo: Windows) [200%]; Brian Moya (Scrum Master y Scrum Development); Luis Quiroga (Scrum Master y Scrum Development) |
| 34 | Funcionamiento del software |  |  |  | resources Computador [200%]; Brian Moya; Luis Quiroga → Computador (Procesador: Intel Core i3, Memoria RAM: 4GB, Sistema Operativo: Windows) [200%]; Brian Moya (Scrum Master y Scrum Development); Luis Quiroga (Scrum Master y Scrum Development) |
| 35 | **Mantenimiento** | 2021-01-21 → 2020-12-27 (-25d) | 154d → 135d | 40% → 45% |  |
| 36 | Ajustes del Proyecto | 2021-01-21 → 2020-12-26 (-26d) | 154d → 136d | 80% → 91% | resources Computador [200%]; Brian Moya; Luis Quiroga → Computador (Procesador: Intel Core i3, Memoria RAM: 4GB, Sistema Operativo: Windows) [200%]; Brian Moya (Scrum Master y Scrum Development); Luis Quiroga (Scrum Master y Scrum Development) |
| 37 | Actualización del sistema | 2021-01-21 → 2020-12-27 (-25d) | 154d → 136d |  | resources Computador [200%]; Brian Moya; Luis Quiroga → Computador (Procesador: Intel Core i3, Memoria RAM: 4GB, Sistema Operativo: Windows); Brian Moya (Scrum Master y Scrum Development); Luis Quiroga (Scrum Master y Scrum Development) |

## Version 3 (saved 2019-12-13)

Last finish stays 2021-02-25.

Changed:

| ID | Task | Finish | Duration | Complete | Other |
| --- | --- | --- | --- | --- | --- |
| 1 | **PROYECTO API** |  |  | 58% → 53% |  |
| 6 | Requisitos Funcionales - Requisitos No Funcionales | 2019-03-29 A → 2019-04-18 A (+20d) |  |  |  |
| 7 | Historias de Usuario | 2019-04-05 A → 2019-04-25 A (+20d) |  |  |  |
| 8 | IEEE830 | 2019-04-27 A → 2019-06-04 A (+38d) |  |  |  |
| 12 | Ensayos Normas de Seguridad | 2019-11-01 A → 2019-11-21 A (+20d) |  |  |  |
| 14 | Modelo Entidad-Relación (MER) | 2019-06-01 A → 2019-06-17 A (+16d) |  |  |  |
| 15 | Diagrama de Clases | 2019-06-22 A → 2019-06-26 A (+4d) |  |  |  |
| 17 | Casos de Uso Extendido | 2019-07-14 A → 2019-07-24 A (+10d) |  |  |  |
| 21 | **Desarrollo** |  |  | 53% → 51% |  |
| 22 | Mockups | 2019-09-08 A → 2019-10-22 A (+44d) | 12d → 11d |  |  |
| 23 | Diseño de páginas web | 2019-09-08 A → 2019-09-18 A (+10d) |  |  |  |
| 24 | Base de Datos Normalización Proyecto API | 2019-09-30 A → 2019-10-25 A (+25d) |  |  |  |
| 25 | Seguridad Bases de Datos | 2019-11-09 → 2019-12-25 (+46d) | 12d → 17.25d |  |  |
| 26 | Versionamiento | 2019-11-10 → 2019-11-11 (+1d) | 2d → 1.5d | 50% → 67% |  |
| 28 | **Implementación** | 2020-02-01 → 2020-07-30 (+180d) | 65d → 193.25d | 46% → 36% |  |
| 29 | Implementación pagina web | 2019-12-07 → 2020-03-30 (+114d) | 27d → 24.75d | 80% → 87% |  |
| 30 | Implementación base de datos | 2019-12-07 → 2020-03-30 (+114d) | 27d → 32d | 10% → 8% |  |
| 31 | Implementación base de datos a página web | 2019-12-08 → 2020-04-02 (+116d) | 27d → 33d | 10% → 8% |  |
| 32 | Pruebas | 2020-02-01 → 2020-07-30 (+180d) | 42d → 62d | 50% → 34% |  |
| 33 | Funcionamiento página web | 2020-02-01 → 2020-07-30 (+180d) | 42d → 44.95d | 90% → 84% |  |
| 34 | Funcionamiento del software | 2020-02-01 → 2020-07-30 (+180d) | 42d → 66d | 20% → 13% |  |
| 36 | Ajustes del Proyecto |  |  |  | resources Computador (Procesador: Intel Core i3, Memoria RAM: 4GB, Sistema Operativo: Windows) [200%]; Brian Moya (Scrum Master y Scrum Development); Luis Quiroga (Scrum Master y Scrum Development) → Computador (Procesador: Intel Core i3, Memoria RAM: 4GB, Sistema Operativo: Windows) [160.3%]; Brian Moya (Scrum Master y Scrum Development); Luis Quiroga (Scrum Master y Scrum Development) |

## Version 4 (saved 2020-10-31)

Last finish 2021-02-25 → 2022-06-09 (+469d). Complete tasks 19 → 23.

Added:

| ID | Task | Duration | Start | Finish | Resources |
| --- | --- | --- | --- | --- | --- |
| 25 | Manual Usuario | 12d | 2020-05-02 A | 2020-05-16 | Luis Quiroga (Scrum Master y Scrum Development); Brian Moya (Scrum Master y Scrum Development); Computador (Procesador: Intel Core i3, Memoria RAM: 4GB, Sistema Operativo: Windows) |
| 26 | Manual Tecnico | 12d | 2020-05-02 A | 2020-05-16 A | Brian Moya (Scrum Master y Scrum Development); Luis Quiroga (Scrum Master y Scrum Development); Uriel Astaiza (Sccrum Master y Scrum Development) |
| 28 | Plan de migración | 12d | 2020-05-23 A | 2020-06-06 A |  |
| 29 | Plan de capacitación | 12d | 2020-06-20 A | 2020-07-04 A |  |
| 30 | Plan de respaldo | 12d | 2020-07-11 A | 2020-07-25 A |  |

Changed:

| ID | Task | Finish | Duration | Complete |
| --- | --- | --- | --- | --- |
| 1 | **PROYECTO API** | 2021-02-25 → 2021-04-25 (+59d) | 535d → 577d? | 53% → 57% |
| 6 | Requisitos Funcionales - Requisitos No Funcionales |  | 6d → 19.25d |  |
| 7 | Historias de Usuario |  | 6d → 19.25d |  |
| 8 | IEEE830 |  | 11d → 42.25d |  |
| 12 | Ensayos Normas de Seguridad |  | 6d → 19.25d |  |
| 14 | Modelo Entidad-Relación (MER) |  | 6d → 21.25d |  |
| 15 | Diagrama de Clases |  | 6d → 18.25d |  |
| 17 | Casos de Uso Extendido |  | 6d → 18.25d |  |
| 21 | **Desarrollo** | 2019-12-25 → 2020-07-25 (+213d) | 87.25d → 240d | 51% → 78% |
| 22 | Mockups |  | 11d → 42.25d |  |
| 23 | Diseño de páginas web |  | 6d → 18.25d |  |
| 24 | Base de Datos Normalización Proyecto API |  | 7d → 25.25d |  |
| 31 | Versionamiento |  | 1.5d → 2d |  |
| 34 | Implementación pagina web |  | 24.75d → 106.25d |  |
| 35 | Implementación base de datos |  | 32d → 106.25d |  |
| 36 | Implementación base de datos a página web |  | 33d → 109.25d |  |
| 37 | Pruebas |  | 62d → 169.25d |  |
| 38 | Funcionamiento página web |  | 44.95d → 169.25d |  |
| 39 | Funcionamiento del software |  | 66d → 169.25d |  |
| 40 | **Mantenimiento** | 2020-12-27 → 2022-06-09 (+529d) | 135d → 513.2d |  |
| 41 | Ajustes del Proyecto | 2020-12-26 → 2022-06-09 (+530d) | 136d → 135d |  |
